# Cronograma Drinks

How a schedule from MS Project changed from version to version. A marks actual dates.

## Version 1 (saved 2016-06-07, file Cronograma-Drinks-Copia.mpp)

| ID | WBS | Task | Duration | Start | Finish | Predecessors | Total float |
| --- | --- | --- | --- | --- | --- | --- | --- |
| 1 | 1 | **Drinks** | 36d | 2016-05-11 09:00 | 2016-06-29 18:00 |  |  |
| 2 | 1.1 | **Prospecção** | 8d | 2016-05-11 09:00 | 2016-05-20 18:00 |  |  |
| 3 | 1.1.1 | **PTEC** | 6d | 2016-05-11 09:00 | 2016-05-18 18:00 |  |  |
| 4 |  | Estudar Domínio de Aplicação | 0.25d | 2016-05-11 09:00 | 2016-05-11 16:00 |  |  |
| 5 |  | Reunir-se com fornecedor de Requisitos | 0.62d | 2016-05-11 16:00 | 2016-05-12 17:00 | 4 |  |
| 6 |  | Redigir PTEC | 2.75d | 2016-05-12 17:00 | 2016-05-16 12:00 | 5 | 31.12d |
| 7 |  | Revisar Proposta Tecnica | 0.12d | 2016-05-18 16:00 | 2016-05-18 17:00 | 6 |  |
| 8 |  | Aprovar PTEC | 0d | 2016-05-18 17:00 | 2016-05-18 17:00 | 7 |  |
| 9 | 1.1.2 | **Estimativa Preliminar de Tamanho** | 1d | 2016-05-20 09:00 | 2016-05-20 18:00 |  |  |
| 10 |  | Estimar Tamanho do Projeto | 0.12d | 2016-05-20 09:00 | 2016-05-20 10:00 | 8 |  |
| 11 |  | Revisar Estimativa de tamanho do Projeto | 0.12d | 2016-05-20 14:00 | 2016-05-20 15:00 | 10 |  |
| 12 | 1.1.3 | **Estimativa Preliminar de Cronograma e Orçamento** | 0.5d? | 2016-05-11 09:00 | 2016-05-11 14:00 |  |  |
| 13 |  | Elaborar Cronograma e Orçamento Preliminares | 0d | 2016-05-20 18:00 | 2016-05-20 18:00 | 9 |  |
| 14 |  | Revisar cronograma e Orçamento Preliminares | 0.12d | 2016-05-20 09:00 | 2016-05-20 10:00 | 13 |  |
| 15 | 1.2 | **Análise** | 6d | 2016-05-20 09:00 | 2016-05-27 18:00 |  |  |
| 16 | 1.2.1 | **Documento de Requisitos** | 4d | 2016-05-20 09:00 | 2016-05-25 18:00 |  |  |
| 17 |  | Reunir-se com o Cliente | 1.12d | 2016-05-20 14:00 | 2016-05-23 15:00 |  |  |
| 18 |  | Elaborar DRE | 1.12d | 2016-05-24 17:00 | 2016-05-25 08:00 | 17 |  |
| 19 |  | Revisar DRE | 0.25d | 2016-05-25 13:00 | 2016-05-25 15:00 | 18 |  |
| 20 |  | Submeter DRE para aprovação do Cliente | 0d | 2016-05-25 15:00 | 2016-05-25 15:00 | 19 |  |
| 21 | 1.2.2 | **Matriz de Rastreabilidade** | 3.25d | 2016-05-26 09:00 | 2016-05-31 11:00 |  | 0d |
| 22 |  | Analisar DRE | 0.25d | 2016-05-26 09:00 | 2016-05-26 16:00 | 16 |  |
| 23 |  | Desenvolver Matriz de Rastreabilidade | 1.75d | 2016-05-26 16:00 | 2016-05-30 18:00 | 22 |  |
| 24 |  | Revisar Matriz de Rastreabilidade | 0.12d | 2016-05-30 18:00 | 2016-05-31 11:00 | 23 |  |
| 25 | 1.3 | **Projeto** | 6.62d | 2016-05-31 13:00 | 2016-06-08 18:00 |  | 0d |
| 26 | 1.3.1 | **Diagrama de Classes** | 6.62d | 2016-05-31 13:00 | 2016-06-08 18:00 |  | 0d |
| 27 |  | Elaborar Diagrama de Classes | 4.25d | 2016-05-31 13:00 | 2016-06-04 15:00 | 24 |  |
| 28 |  | Revisar Diagrama de Classes | 0.25d | 2016-06-08 08:00 | 2016-06-08 10:00 | 27 |  |
| 29 |  | Atualizar MRB | 0d | 2016-06-08 18:00 | 2016-06-08 18:00 | 27 |  |
| 30 | 1.4 | **Modelo Entidade de Relacionamento** | 2d | 2016-06-09 07:00 | 2016-06-11 10:00 |  | 0d |
| 31 |  | Elaborar MER | 0.38d | 2016-06-09 07:00 | 2016-06-09 10:00 | 26 |  |
| 32 |  | Revisar MER | 1.75d | 2016-06-09 13:00 | 2016-06-11 10:00 | 31 |  |
| 33 | 1.5 | **Implementação** | 31.56d | 2016-05-11 09:00 | 2016-06-23 14:30 |  | 0d |
| 34 | 1.5.1 | **Implementação 01** | 3d | 2016-06-10 13:00 | 2016-06-15 12:00 |  | 0d |
| 35 | 1.5.1.1 | **Implementação RFC01** | 1.75d | 2016-06-10 13:00 | 2016-06-14 10:00 |  | 0d |
| 36 |  | Implementar RFS01 | 0.5d | 2016-06-10 13:00 | 2016-06-10 17:00 | 32 |  |
| 37 |  | Implementar RFS02 | 0.62d | 2016-06-10 17:00 | 2016-06-11 14:00 | 36 |  |
| 38 |  | Implementar RFS03 | 0.5d | 2016-06-13 13:00 | 2016-06-13 17:00 | 37 |  |
| 39 |  | Implementar RFS04 | 0.25d | 2016-06-13 17:00 | 2016-06-14 10:00 | 38 |  |
| 40 | 1.5.1.2 | **Implementação RFC05** | 2.62d | 2016-06-10 13:00 | 2016-06-14 18:00 |  |  |
| 41 |  | Implementar RFS013 | 0.25d | 2016-06-11 10:00 | 2016-06-11 16:00 | 32 |  |
| 42 | 1.5.1.3 | **Teste** | 2.25d | 2016-06-13 10:00 | 2016-06-15 12:00 |  | 0d |
| 43 |  | Teste RFC01 | 0.88d | 2016-06-14 14:00 | 2016-06-15 12:00 | 39 |  |
| 44 |  | Teste RFC05 | 0.88d | 2016-06-13 10:00 | 2016-06-14 09:00 | 41 |  |
| 45 | 1.5.2 | **Implementação 02** | 2.38d | 2016-06-11 10:00 | 2016-06-15 12:00 |  | 0d |
| 46 | 1.5.2.1 | **Implementação RFC06** | 0d | 2016-06-11 10:00 | 2016-06-11 18:00 |  | 0d |
| 47 |  | Implementar RFS014 | 0.88d | 2016-06-11 10:00 | 2016-06-11 18:00 | 32 |  |
| 48 | 1.5.2.2 | **Implementação RFC08** | 1d | 2016-06-13 13:00 | 2016-06-14 12:00 |  | 0d |
| 49 |  | Implementar RFS018 | 0.62d | 2016-06-13 13:00 | 2016-06-14 12:00 | 32 |  |
| 50 | 1.5.2.3 | **Teste** | 1.88d | 2016-06-13 14:00 | 2016-06-15 12:00 |  | 0d |
| 51 |  | Teste RFC06 | 0.88d | 2016-06-13 14:00 | 2016-06-14 12:00 | 47 |  |
| 52 |  | Teste RFC08 | 1d | 2016-06-14 13:00 | 2016-06-15 12:00 | 49 |  |
| 53 | 1.5.3 | **Implementação 03** | 25.25d | 2016-05-13 09:00 | 2016-06-17 11:00 |  | 0d |
| 54 | 1.5.3.1 | **Implementação RFC02** | 25d | 2016-05-13 09:00 | 2016-06-16 18:00 |  |  |
| 55 |  | Implementar RFS05 | 0d | 2016-06-15 13:00 | 2016-06-15 13:00 | 52 |  |
| 56 |  | Implementar RFS06 | 1.62d | 2016-06-11 10:00 | 2016-06-13 06:00 | 32 |  |
| 57 |  | Implementar RFS07 | 1d | 2016-06-13 08:00 | 2016-06-13 17:00 | 32 |  |
| 58 |  | Implementar RFS08 | 0.88d | 2016-06-11 10:00 | 2016-06-11 18:00 | 32 |  |
| 59 | 1.5.3.2 | **Implementação RFC04** | 1d | 2016-06-16 09:00 | 2016-06-16 18:00 |  | 0d |
| 60 |  | Implementar RFS12 | 1d | 2016-06-16 09:00 | 2016-06-16 18:00 | 58 |  |
| 61 | 1.5.3.3 | **Implementação RFC09** | 0.62d | 2016-06-13 14:00 | 2016-06-14 10:00 |  | 0d |
| 62 |  | Implementar RFS19 | 0.62d | 2016-06-13 14:00 | 2016-06-14 10:00 | 58 |  |
| 63 |  | Implementar RFS20 | 0.62d | 2016-06-13 14:00 | 2016-06-14 10:00 | 58 |  |
| 64 | 1.5.3.4 | **Teste** | 3.75d | 2016-06-13 14:00 | 2016-06-17 11:00 |  | 0d |
| 65 |  | Teste RFC02 | 1.5d | 2016-06-13 14:00 | 2016-06-14 18:00 | 58 |  |
| 66 |  | Teste RFC04 | 0.25d | 2016-06-17 09:00 | 2016-06-17 11:00 | 60 |  |
| 67 |  | Teste RFC09 | 0.25d | 2016-06-14 13:00 | 2016-06-14 17:00 | 63 |  |
| 68 | 1.5.4 | **Implementação 04** | 5.12d | 2016-06-14 17:00 | 2016-06-21 18:00 |  | 0d |
| 69 | 1.5.4.1 | **Implementação RFC03** | 1.62d | 2016-06-14 17:00 | 2016-06-16 14:00 |  | 0d |
| 70 |  | Implementar RFS09 | 0.5d | 2016-06-14 17:00 | 2016-06-15 12:00 | 67 |  |

| ID | WBS | Task | Duration | Start | Finish | Predecessors | Total float |
| --- | --- | --- | --- | --- | --- | --- | --- |
| 71 |  | Implementar RFS10 | 0.5d | 2016-06-15 14:00 | 2016-06-15 18:00 | 70 |  |
| 72 |  | Implementar RFS11 | 0.62d | 2016-06-16 08:00 | 2016-06-16 14:00 | 71 |  |
| 73 | 1.5.4.2 | **Implementação RFC07** | 2.75d | 2016-06-14 17:00 | 2016-06-17 15:00 |  | 0d |
| 74 |  | Implementar RFS15 | 0.62d | 2016-06-14 17:00 | 2016-06-15 17:00 | 67 |  |
| 75 |  | Implementar RFS16 | 0.62d | 2016-06-15 16:00 | 2016-06-16 16:00 | 74 |  |
| 76 |  | Implementar RFS17 | 0.5d | 2016-06-16 16:00 | 2016-06-17 15:00 | 75 |  |
| 77 | 1.5.4.3 | **Teste** | 1d | 2016-06-21 09:00 | 2016-06-21 18:00 |  | 0d |
| 78 |  | Teste RFC03 | 0.25d | 2016-06-21 09:00 | 2016-06-21 15:00 | 72 |  |
| 79 |  | TesteRFC07 | 0.62d | 2016-06-21 09:00 | 2016-06-21 18:00 | 76 |  |
| 80 | 1.5.5 | **Monitoramento e Controle** | 1d | 2016-05-11 09:00 | 2016-05-11 18:00 |  | 0d |
| 81 |  | Acompanhar Projeto | 1d | 2016-05-11 09:00 | 2016-05-11 18:00 |  |  |
| 82 | 1.5.6 | **Gerência de Configuração** | 1.56d | 2016-06-22 09:00 | 2016-06-23 14:30 |  | 0d |
| 83 |  | Elaborar Branch | 0.56d | 2016-06-22 09:00 | 2016-06-22 14:30 | 32 |  |
| 84 |  | Realizar Merge da Branch X para a Trunk | 0.56d | 2016-06-23 09:00 | 2016-06-23 14:30 | 32 |  |

## Version 2 (saved 2016-06-09, file Cronograma-Drinks-Final.mpp)

Last finish stays 2016-06-29. Complete tasks 0 → 1.

Changed:

| ID | Task | Start | Finish | Duration | Complete | Other |
| --- | --- | --- | --- | --- | --- | --- |
| 1 | **Drinks** | 2016-05-11 09:00 A |  |  |  | baseline start none → 2016-05-11 09:00; baseline finish none → 2016-06-29 18:00 |
| 2 | **Prospecção** | 2016-05-11 09:00 A |  |  | 0% → 3% | baseline start none → 2016-05-11 09:00; baseline finish none → 2016-05-20 18:00 |
| 3 | **PTEC** | 2016-05-11 09:00 A |  |  | 0% → 3% | baseline start none → 2016-05-11 09:00; baseline finish none → 2016-05-18 18:00 |
| 4 | Estudar Domínio de Aplicação | 2016-05-11 09:00 A | 2016-05-11 16:00 → 2016-05-11 15:00 A | 0.25d → 0.12d | 0% → 100% | baseline start none → 2016-05-11 09:00; baseline finish none → 2016-05-11 16:00 |
| 5 | Reunir-se com fornecedor de Requisitos |  |  |  |  | baseline start none → 2016-05-11 16:00; baseline finish none → 2016-05-12 17:00 |
| 6 | Redigir PTEC |  |  |  |  | baseline start none → 2016-05-12 17:00; baseline finish none → 2016-05-16 12:00 |
| 7 | Revisar Proposta Tecnica |  |  |  |  | baseline start none → 2016-05-18 16:00; baseline finish none → 2016-05-18 17:00 |
| 8 | Aprovar PTEC |  |  |  |  | baseline start none → 2016-05-18 17:00; baseline finish none → 2016-05-18 17:00 |
| 9 | **Estimativa Preliminar de Tamanho** |  |  |  |  | baseline start none → 2016-05-20 09:00; baseline finish none → 2016-05-20 18:00 |
| 10 | Estimar Tamanho do Projeto |  |  |  |  | baseline start none → 2016-05-20 09:00; baseline finish none → 2016-05-20 10:00 |
| 11 | Revisar Estimativa de tamanho do Projeto |  |  |  |  | baseline start none → 2016-05-20 14:00; baseline finish none → 2016-05-20 15:00 |
| 12 | **Estimativa Preliminar de Cronograma e Orçamento** |  |  |  |  | baseline start none → 2016-05-11 09:00; baseline finish none → 2016-05-11 14:00 |
| 13 | Elaborar Cronograma e Orçamento Preliminares |  |  |  |  | baseline start none → 2016-05-20 18:00; baseline finish none → 2016-05-20 18:00 |
| 14 | Revisar cronograma e Orçamento Preliminares |  |  |  |  | baseline start none → 2016-05-20 09:00; baseline finish none → 2016-05-20 10:00 |
| 15 | **Análise** |  |  |  |  | baseline start none → 2016-05-20 09:00; baseline finish none → 2016-05-27 18:00 |
| 16 | **Documento de Requisitos** |  |  |  |  | baseline start none → 2016-05-20 09:00; baseline finish none → 2016-05-25 18:00 |
| 17 | Reunir-se com o Cliente |  |  |  |  | baseline start none → 2016-05-20 14:00; baseline finish none → 2016-05-23 15:00 |
| 18 | Elaborar DRE |  |  |  |  | baseline start none → 2016-05-24 17:00; baseline finish none → 2016-05-25 08:00 |
| 19 | Revisar DRE |  |  |  |  | baseline start none → 2016-05-25 13:00; baseline finish none → 2016-05-25 15:00 |
| 20 | Submeter DRE para aprovação do Cliente |  |  |  |  | baseline start none → 2016-05-25 15:00; baseline finish none → 2016-05-25 15:00 |
| 21 | **Matriz de Rastreabilidade** |  |  |  |  | baseline start none → 2016-05-26 09:00; baseline finish none → 2016-05-31 11:00 |
| 22 | Analisar DRE |  |  |  |  | baseline start none → 2016-05-26 09:00; baseline finish none → 2016-05-26 16:00 |
| 23 | Desenvolver Matriz de Rastreabilidade |  |  |  |  | baseline start none → 2016-05-26 16:00; baseline finish none → 2016-05-30 18:00 |
| 24 | Revisar Matriz de Rastreabilidade |  |  |  |  | baseline start none → 2016-05-31 09:00; baseline finish none → 2016-05-31 11:00 |
| 25 | **Projeto** |  |  |  |  | baseline start none → 2016-05-31 13:00; baseline finish none → 2016-06-08 18:00 |
| 26 | **Diagrama de Classes** |  |  |  |  | baseline start none → 2016-05-31 13:00; baseline finish none → 2016-06-08 18:00 |
| 27 | Elaborar Diagrama de Classes |  |  |  |  | baseline start none → 2016-05-31 13:00; baseline finish none → 2016-06-04 15:00 |
| 28 | Revisar Diagrama de Classes |  |  |  |  | baseline start none → 2016-06-08 08:00; baseline finish none → 2016-06-08 10:00 |
| 29 | Atualizar MRB |  |  |  |  | baseline start none → 2016-06-08 18:00; baseline finish none → 2016-06-08 18:00 |
| 30 | **Modelo Entidade de Relacionamento** |  |  |  |  | baseline start none → 2016-06-09 07:00; baseline finish none → 2016-06-11 10:00 |
| 31 | Elaborar MER |  |  |  |  | baseline start none → 2016-06-09 07:00; baseline finish none → 2016-06-09 10:00 |
| 32 | Revisar MER |  |  |  |  | baseline start none → 2016-06-09 13:00; baseline finish none → 2016-06-11 10:00 |
| 33 | **Implementação** |  |  |  |  | baseline start none → 2016-05-11 09:00; baseline finish none → 2016-06-23 14:30 |
| 34 | **Implementação 01** |  |  |  |  | baseline start none → 2016-06-10 13:00; baseline finish none → 2016-06-15 12:00 |
| 35 | **Implementação RFC01** |  |  |  |  | baseline start none → 2016-06-10 13:00; baseline finish none → 2016-06-14 10:00 |
| 36 | Implementar RFS01 |  |  |  |  | baseline start none → 2016-06-10 13:00; baseline finish none → 2016-06-10 17:00 |
| 37 | Implementar RFS02 |  |  |  |  | baseline start none → 2016-06-10 17:00; baseline finish none → 2016-06-11 14:00 |
| 38 | Implementar RFS03 |  |  |  |  | baseline start none → 2016-06-13 13:00; baseline finish none → 2016-06-13 17:00 |
| 39 | Implementar RFS04 |  |  |  |  | baseline start none → 2016-06-13 17:00; baseline finish none → 2016-06-14 10:00 |
| 40 | **Implementação RFC05** |  |  |  |  | baseline start none → 2016-06-10 13:00; baseline finish none → 2016-06-14 18:00 |
| 41 | Implementar RFS013 |  |  |  |  | baseline start none → 2016-06-11 10:00; baseline finish none → 2016-06-11 16:00 |
| 42 | **Teste** |  |  |  |  | baseline start none → 2016-06-13 10:00; baseline finish none → 2016-06-15 12:00 |
| 43 | Teste RFC01 |  |  |  |  | baseline start none → 2016-06-14 14:00; baseline finish none → 2016-06-15 12:00 |
| 44 | Teste RFC05 |  |  |  |  | baseline start none → 2016-06-13 10:00; baseline finish none → 2016-06-14 09:00 |
| 45 | **Implementação 02** |  |  |  |  | baseline start none → 2016-06-11 10:00; baseline finish none → 2016-06-15 12:00 |
| 46 | **Implementação RFC06** |  |  |  |  | baseline start none → 2016-06-11 10:00; baseline finish none → 2016-06-11 18:00 |
| 47 | Implementar RFS014 |  |  |  |  | baseline start none → 2016-06-11 10:00; baseline finish none → 2016-06-11 18:00 |
| 48 | **Implementação RFC08** |  |  |  |  | baseline start none → 2016-06-13 13:00; baseline finish none → 2016-06-14 12:00 |
| 49 | Implementar RFS018 |  |  |  |  | baseline start none → 2016-06-13 13:00; baseline finish none → 2016-06-14 12:00 |
| 50 | **Teste** |  |  |  |  | baseline start none → 2016-06-13 14:00; baseline finish none → 2016-06-15 12:00 |
| 51 | Teste RFC06 |  |  |  |  | baseline start none → 2016-06-13 14:00; baseline finish none → 2016-06-14 12:00 |
| 52 | Teste RFC08 |  |  |  |  | baseline start none → 2016-06-14 13:00; baseline finish none → 2016-06-15 12:00 |
| 53 | **Implementação 03** |  |  |  |  | baseline start none → 2016-05-13 09:00; baseline finish none → 2016-06-17 11:00 |
| 54 | **Implementação RFC02** |  |  |  |  | baseline start none → 2016-05-13 09:00; baseline finish none → 2016-06-16 18:00 |
| 55 | Implementar RFS05 |  |  |  |  | baseline start none → 2016-06-15 13:00; baseline finish none → 2016-06-15 13:00 |
| 56 | Implementar RFS06 |  |  |  |  | baseline start none → 2016-06-11 10:00; baseline finish none → 2016-06-13 06:00 |
| 57 | Implementar RFS07 |  |  |  |  | baseline start none → 2016-06-13 08:00; baseline finish none → 2016-06-13 17:00 |
| 58 | Implementar RFS08 |  |  |  |  | baseline start none → 2016-06-11 10:00; baseline finish none → 2016-06-11 18:00 |
| 59 | **Implementação RFC04** |  |  |  |  | baseline start none → 2016-06-16 09:00; baseline finish none → 2016-06-16 18:00 |
| 60 | Implementar RFS12 |  |  |  |  | baseline start none → 2016-06-16 09:00; baseline finish none → 2016-06-16 18:00 |
| 61 | **Implementação RFC09** |  |  |  |  | baseline start none → 2016-06-13 14:00; baseline finish none → 2016-06-14 10:00 |
| 62 | Implementar RFS19 |  |  |  |  | baseline start none → 2016-06-13 14:00; baseline finish none → 2016-06-14 10:00 |
| 63 | Implementar RFS20 |  |  |  |  | baseline start none → 2016-06-13 14:00; baseline finish none → 2016-06-14 10:00 |
| 64 | **Teste** |  |  |  |  | baseline start none → 2016-06-13 14:00; baseline finish none → 2016-06-17 11:00 |
| 65 | Teste RFC02 |  |  |  |  | baseline start none → 2016-06-13 14:00; baseline finish none → 2016-06-14 18:00 |
| 66 | Teste RFC04 |  |  |  |  | baseline start none → 2016-06-17 09:00; baseline finish none → 2016-06-17 11:00 |
| 67 | Teste RFC09 |  |  |  |  | baseline start none → 2016-06-14 13:00; baseline finish none → 2016-06-14 17:00 |
| 68 | **Implementação 04** |  |  |  |  | baseline start none → 2016-06-14 17:00; baseline finish none → 2016-06-21 18:00 |
| 69 | **Implementação RFC03** |  | 2016-06-16 14:00 → 2016-06-16 12:00 | 1.62d → 1.5d |  | baseline start none → 2016-06-14 17:00; baseline finish none → 2016-06-16 12:00 |
| 70 | Implementar RFS09 |  |  |  |  | baseline start none → 2016-06-14 17:00; baseline finish none → 2016-06-15 12:00 |

| ID | Task | Other |
| --- | --- | --- |
| 71 | Implementar RFS10 | baseline start none → 2016-06-15 14:00; baseline finish none → 2016-06-15 18:00 |
| 72 | Implementar RFS11 | baseline start none → 2016-06-16 08:00; baseline finish none → 2016-06-16 12:00 |
| 73 | **Implementação RFC07** | baseline start none → 2016-06-14 17:00; baseline finish none → 2016-06-17 15:00 |
| 74 | Implementar RFS15 | baseline start none → 2016-06-14 17:00; baseline finish none → 2016-06-15 17:00 |
| 75 | Implementar RFS16 | baseline start none → 2016-06-15 16:00; baseline finish none → 2016-06-16 16:00 |
| 76 | Implementar RFS17 | baseline start none → 2016-06-16 16:00; baseline finish none → 2016-06-17 15:00 |
| 77 | **Teste** | baseline start none → 2016-06-21 09:00; baseline finish none → 2016-06-21 18:00 |
| 78 | Teste RFC03 | baseline start none → 2016-06-21 09:00; baseline finish none → 2016-06-21 15:00 |
| 79 | TesteRFC07 | baseline start none → 2016-06-21 09:00; baseline finish none → 2016-06-21 18:00 |
| 80 | **Monitoramento e Controle** | baseline start none → 2016-05-11 09:00; baseline finish none → 2016-05-11 18:00 |
| 81 | Acompanhar Projeto | baseline start none → 2016-05-11 09:00; baseline finish none → 2016-05-11 18:00 |
| 82 | **Gerência de Configuração** | baseline start none → 2016-06-22 09:00; baseline finish none → 2016-06-23 14:30 |
| 83 | Elaborar Branch | baseline start none → 2016-06-22 09:00; baseline finish none → 2016-06-22 14:30 |
| 84 | Realizar Merge da Branch X para a Trunk | baseline start none → 2016-06-23 09:00; baseline finish none → 2016-06-23 14:30 |

## Version 3 (saved 2016-06-16, file Cronograma-Drinks-Final-Copia.mpp)

Last finish stays 2016-06-29. Complete tasks 1 → 32.

Changed:

| ID | Task | Start | Finish | Duration | Complete | Total float |
| --- | --- | --- | --- | --- | --- | --- |
| 1 | **Drinks** |  |  |  | 0% → 63% |  |
| 2 | **Prospecção** |  | 2016-05-20 18:00 A |  | 3% → 100% |  |
| 3 | **PTEC** |  |  |  | 3% → 100% |  |
| 5 | Reunir-se com fornecedor de Requisitos | 2016-05-11 16:00 A | 2016-05-12 17:00 → 2016-05-12 12:00 A | 0.62d → 0.12d | 0% → 100% |  |
| 6 | Redigir PTEC | 2016-05-12 17:00 A | 2016-05-16 12:00 A |  | 0% → 100% | 31.12d → none |
| 7 | Revisar Proposta Tecnica | 2016-05-18 16:00 A | 2016-05-18 17:00 A |  | 0% → 100% |  |
| 8 | Aprovar PTEC | 2016-05-18 17:00 A | 2016-05-18 17:00 A |  | 0% → 100% |  |
| 9 | **Estimativa Preliminar de Tamanho** | 2016-05-20 09:00 A |  |  | 0% → 100% |  |
| 10 | Estimar Tamanho do Projeto | 2016-05-20 09:00 A | 2016-05-20 10:00 A |  | 0% → 100% |  |
| 11 | Revisar Estimativa de tamanho do Projeto | 2016-05-20 14:00 A | 2016-05-20 15:00 A |  | 0% → 100% |  |
| 12 | **Estimativa Preliminar de Cronograma e Orçamento** |  | 2016-05-11 14:00 → 2016-05-20 18:00 A (+9d) | 0.5d? → 8d | 0% → 100% |  |
| 13 | Elaborar Cronograma e Orçamento Preliminares | 2016-05-20 18:00 A | 2016-05-20 18:00 A |  | 0% → 100% |  |
| 14 | Revisar cronograma e Orçamento Preliminares | 2016-05-20 09:00 A | 2016-05-20 10:00 A |  | 0% → 100% |  |
| 15 | **Análise** |  |  |  | 0% → 100% |  |
| 16 | **Documento de Requisitos** |  |  |  | 0% → 100% |  |
| 17 | Reunir-se com o Cliente | 2016-05-20 14:00 A | 2016-05-23 15:00 A |  | 0% → 100% |  |
| 18 | Elaborar DRE | 2016-05-24 17:00 A | 2016-05-25 08:00 A |  | 0% → 100% |  |
| 19 | Revisar DRE | 2016-05-25 13:00 A | 2016-05-25 15:00 A |  | 0% → 100% |  |
| 20 | Submeter DRE para aprovação do Cliente | 2016-05-25 15:00 A | 2016-05-25 15:00 A |  | 0% → 100% |  |
| 21 | **Matriz de Rastreabilidade** | 2016-05-26 09:00 A | 2016-05-31 11:00 A |  | 0% → 100% | 0d → none |
| 22 | Analisar DRE | 2016-05-26 09:00 A | 2016-05-26 16:00 A |  | 0% → 100% |  |
| 23 | Desenvolver Matriz de Rastreabilidade | 2016-05-26 16:00 A | 2016-05-30 18:00 → 2016-05-30 10:23 A | 1.75d → 0.92d | 0% → 100% |  |
| 24 | Revisar Matriz de Rastreabilidade |  | 2016-05-31 11:00 A |  | 0% → 100% |  |
| 25 | **Projeto** | 2016-05-31 13:00 A | 2016-06-08 18:00 A |  | 0% → 100% | 0d → none |
| 26 | **Diagrama de Classes** | 2016-05-31 13:00 A | 2016-06-08 18:00 A |  | 0% → 100% | 0d → none |
| 27 | Elaborar Diagrama de Classes | 2016-05-31 13:00 A | 2016-06-04 15:00 A |  | 0% → 100% |  |
| 28 | Revisar Diagrama de Classes | 2016-06-08 08:00 A | 2016-06-08 10:00 A |  | 0% → 100% |  |
| 29 | Atualizar MRB | 2016-06-08 18:00 A | 2016-06-08 18:00 A |  | 0% → 100% |  |
| 30 | **Modelo Entidade de Relacionamento** | 2016-06-09 07:00 A | 2016-06-11 10:00 A |  | 0% → 100% | 0d → none |
| 31 | Elaborar MER | 2016-06-09 07:00 A | 2016-06-09 10:00 A |  | 0% → 100% |  |
| 32 | Revisar MER | 2016-06-09 13:00 A | 2016-06-11 10:00 A |  | 0% → 100% |  |
| 33 | **Implementação** | 2016-05-11 09:00 A |  |  | 0% → 39% |  |
| 34 | **Implementação 01** | 2016-06-10 13:00 A | 2016-06-15 12:00 A |  | 0% → 100% | 0d → none |
| 35 | **Implementação RFC01** | 2016-06-10 13:00 A | 2016-06-14 10:00 A |  | 0% → 100% | 0d → none |
| 36 | Implementar RFS01 | 2016-06-10 13:00 A | 2016-06-10 17:00 A |  | 0% → 100% |  |
| 37 | Implementar RFS02 | 2016-06-10 17:00 A | 2016-06-11 14:00 A |  | 0% → 100% |  |
| 38 | Implementar RFS03 | 2016-06-13 13:00 A | 2016-06-13 17:00 A |  | 0% → 100% |  |
| 39 | Implementar RFS04 | 2016-06-13 17:00 A | 2016-06-14 10:00 A |  | 0% → 100% |  |
| 40 | **Implementação RFC05** |  |  |  | 0% → 100% |  |
| 41 | Implementar RFS013 | 2016-06-11 10:00 A | 2016-06-11 16:00 A |  | 0% → 100% |  |
| 42 | **Teste** | 2016-06-13 10:00 A | 2016-06-15 12:00 A |  | 0% → 100% | 0d → none |
| 43 | Teste RFC01 | 2016-06-14 14:00 A | 2016-06-15 12:00 A |  | 0% → 100% |  |
| 44 | Teste RFC05 | 2016-06-13 10:00 A | 2016-06-14 09:00 A |  | 0% → 100% |  |
| 45 | **Implementação 02** | 2016-06-11 10:00 A | 2016-06-15 12:00 A |  | 0% → 100% | 0d → none |
| 46 | **Implementação RFC06** | 2016-06-11 10:00 A | 2016-06-11 18:00 A |  | 0% → 100% | 0d → none |
| 47 | Implementar RFS014 | 2016-06-11 10:00 A | 2016-06-11 18:00 A |  | 0% → 100% |  |
| 48 | **Implementação RFC08** | 2016-06-13 13:00 A | 2016-06-14 12:00 A |  | 0% → 100% | 0d → none |
| 49 | Implementar RFS018 | 2016-06-13 13:00 A | 2016-06-14 12:00 A |  | 0% → 100% |  |
| 50 | **Teste** | 2016-06-13 14:00 A | 2016-06-15 12:00 A |  | 0% → 100% | 0d → none |
| 51 | Teste RFC06 | 2016-06-13 14:00 A | 2016-06-14 12:00 A |  | 0% → 100% |  |
| 52 | Teste RFC08 | 2016-06-14 13:00 A | 2016-06-15 12:00 A |  | 0% → 100% |  |
| 53 | **Implementação 03** | 2016-05-13 09:00 → 2016-06-13 14:00 (+31d) |  | 25.25d → 3.75d |  |  |
| 59 | **Teste** | 2016-06-13 14:00 → 2016-06-14 13:00 (+1d) |  | 3.75d → 2.88d |  |  |
| 62 | **Implementação 04** | 2016-06-14 17:00 → 2016-05-13 09:00 (-32d) |  | 5.12d → 28d |  |  |
| 76 | **Teste** | 2016-06-21 09:00 → 2016-06-13 14:00 (-8d) |  | 1d → 6.5d |  |  |
| 80 | **Monitoramento e Controle** | 2016-05-11 09:00 A |  |  | 0% → 50% |  |
| 81 | Acompanhar Projeto | 2016-05-11 09:00 A |  |  | 0% → 50% |  |
| 82 | **Gerência de Configuração** | 2016-06-22 09:00 A |  |  | 0% → 50% |  |
| 83 | Elaborar Branch | 2016-06-22 09:00 A |  |  | 0% → 50% |  |
| 84 | Realizar Merge da Branch X para a Trunk | 2016-06-23 09:00 A |  |  | 0% → 50% |  |
